Schedule from MS Project, 2013-05-15 to 2013-05-31, A marks actual dates.

## Calendars

- 标准: Mon-Fri 08:00-12:00, 13:00-17:00; Sat-Sun off.

## Resources

| Resource |
| --- |
| 王晨波 |
| 邵珠玉 |
| UCD |
| 郑新联 |
| 蒋进丰 |
| 张小伟 |
| 蔚志坚 |
| 测试部 |
| 朱洪金 |

## Schedule

| ID | WBS | Task | Duration | Start | Finish | Predecessors | Complete | Remaining | Total slack | Free slack | Constraint | Resources | Work | Actual work |
| --- | --- | --- | --- | --- | --- | --- | --- | --- | --- | --- | --- | --- | --- | --- |
| 1 | 1 | **易享** | 13d? | 2013-05-15 A | 2013-05-31 |  | 2% | 12.74d? | 0d |  |  |  | 412h | 8h |
| 2 | 1.1 | **设计开发** | 9d? | 2013-05-15 A | 2013-05-27 |  | 2% | 8.8d? | 4d |  |  |  | 356h | 8h |
| 3 | 1.1.1 | **框架设计** | 2d? | 2013-05-15 A | 2013-05-16 |  | 50% | 1d? | 0d |  |  |  | 16h | 8h |
| 4 | 1.1.1.1 | 项目SVN以及框架搭建 | 2d? | 2013-05-15 A | 2013-05-16 |  | 50% | 1d? | 0d |  | must start on 2013-05-15 | 张小伟 | 16h | 8h |
| 5 | 1.1.2 | **设置功能开发** | 6d | 2013-05-17 | 2013-05-24 |  |  |  | 5d |  |  |  | 52h |  |
| 6 | 1.1.2.1 | 搜索DONGLE,并连接 | 0.5d | 2013-05-17 | 2013-05-17 | 4 |  |  | 10.5d |  | start no earlier than 2013-05-17 | 张小伟 | 4h |  |
| 7 | 1.1.2.2 | DONGLE通讯接口定义 | 1d | 2013-05-17 | 2013-05-17 | 4 |  |  | 8.5d | 0d | start no earlier than 2013-05-17 | 张小伟 | 8h |  |
| 8 | 1.1.2.3 | 让DONGLE连接路由 | 1d | 2013-05-20 | 2013-05-20 | 7 |  |  | 8.5d | 0d |  | 张小伟 | 8h |  |
| 9 | 1.1.2.4 | 修改DONGLE名字 | 0.5d | 2013-05-21 | 2013-05-21 | 8 |  |  | 8.5d |  |  | 张小伟 | 4h |  |
| 10 | 1.1.2.5 | 调整画面大小 | 1d | 2013-05-22 | 2013-05-22 |  |  |  | 6d | 0d | start no earlier than 2013-05-22 | 张小伟 | 8h |  |
| 11 | 1.1.2.6 | 关于 | 0.5d | 2013-05-21 | 2013-05-21 |  |  |  | 8.5d |  | start no earlier than 2013-05-21 | 张小伟 | 4h |  |
| 12 | 1.1.2.7 | 检查更新 | 1d | 2013-05-23 | 2013-05-23 | 10 |  |  | 4d | 0d |  | 张小伟 | 8h |  |
| 13 | 1.1.2.8 | 设置迭代版本发布 | 1d | 2013-05-24 | 2013-05-24 | 12 |  |  | 4d | 0d |  | 张小伟 | 8h |  |
| 14 | 1.1.3 | **Miracast** | 2d | 2013-05-24 | 2013-05-27 |  |  |  | 4d |  |  |  | 16h |  |
| 15 | 1.1.3.1 | 投投看移植 | 1d | 2013-05-27 | 2013-05-27 | 13 |  |  | 4d |  | start no earlier than 2013-05-24 | 张小伟 | 8h |  |
| 16 | 1.1.3.2 | 迭代版本 | 1d | 2013-05-24 | 2013-05-24 |  |  |  | 5d |  | start no earlier than 2013-05-24 | 张小伟 | 8h |  |
| 17 | 1.1.4 | **DLNA** | 8d | 2013-05-15 | 2013-05-24 |  |  |  | 5d |  |  |  | 272h |  |
| 18 | 1.1.4.1 | 本地图片和网络图片 | 8d | 2013-05-15 | 2013-05-24 |  |  |  | 5d |  | start no earlier than 2013-05-15 | 蔚志坚 | 64h |  |
| 19 | 1.1.4.2 | 本地视频和网络视频 | 8d | 2013-05-15 | 2013-05-24 |  |  |  | 5d |  | start no earlier than 2013-05-15 | 蔚志坚 | 64h |  |
| 20 | 1.1.4.3 | 本地音乐和网络音乐 | 8d | 2013-05-15 | 2013-05-24 |  |  |  | 5d |  | start no earlier than 2013-05-15 | 蔚志坚 | 64h |  |
| 21 | 1.1.4.4 | 遥控 | 5d | 2013-05-20 | 2013-05-24 |  |  |  | 5d |  | start no earlier than 2013-05-20 | 蔚志坚 | 40h |  |
| 22 | 1.1.4.5 | 迭代版本 | 5d | 2013-05-20 | 2013-05-24 |  |  |  | 5d |  | start no earlier than 2013-05-20 | 蔚志坚 | 40h |  |
| 23 | 1.2 | **集成测试** | 2d | 2013-05-27 | 2013-05-28 |  |  |  | 1d | 0d |  |  | 24h |  |
| 24 | 1.2.1 | 执行集成测试用例，并修改自测试BUG | 1d | 2013-05-27 | 2013-05-27 | 2 |  |  | 1d | 0d | finish no earlier than 2013-05-27 | 蔚志坚; 张小伟 | 16h |  |
| 25 | 1.2.2 | 提交转测试版本（V100R001B010） | 1d | 2013-05-28 | 2013-05-28 | 24 |  |  | 1d |  |  | 张小伟 | 8h |  |

| ID | WBS | Task | Duration | Start | Finish | Predecessors | Total slack | Constraint | Resources | Work |
| --- | --- | --- | --- | --- | --- | --- | --- | --- | --- | --- |
| 26 | 1.3 | **系统测试** | 2d | 2013-05-29 | 2013-05-30 |  | 1d |  |  | 24h |
| 27 | 1.3.1 | 执行系统测试用例 | 1d | 2013-05-29 | 2013-05-29 | 23 | 2d | start no earlier than 2013-05-29 | 朱洪金 | 8h |
| 28 | 1.3.2 | 修改BUG | 1d | 2013-05-30 | 2013-05-30 | 23 | 0d | finish no earlier than 2013-05-30 | 蔚志坚; 张小伟 | 16h |
| 29 | 1.4 | **发布** | 1d | 2013-05-31 | 2013-05-31 |  | 0d |  |  | 8h |
| 30 | 1.4.1 | 发布易享第一版 | 1d | 2013-05-31 | 2013-05-31 | 28 | 0d | start no earlier than 2013-05-31 | 邵珠玉 | 8h |
